Schedule from MS Project, 2023-09-14 to 2023-11-17, costs in $.

## Calendars

- Estándar: Mon-Fri 09:00-13:00, 15:00-19:00; Sat-Sun off. Exceptions (off unless hours are given): 2023-10-16 (Dia de la Diversidad Cultural).

## Resources

| Resource | Rate | Cost per use |
| --- | --- | --- |
| Computadoras |  | 1020000 |
| Materiales electricos |  | 40000 |
| Materiales de limpieza |  | 6000 |
| Ingeniero de Sistemas |  | 787162 |
| Electricista |  | 12000 |
| Tecnico informatico | 6993 |  |
| Programador Junior | 16840 |  |
| Programador Senior | 18841 |  |
| Diseñador de Interfaces | 11378 |  |
| Ingeniero de pruebas | 13834 |  |
| Analista en sistemas | 15173 |  |
| Administrador de BD | 15173 |  |
| Servicio de limpieza | 1300 |  |
| Capacitador | 7298 |  |

## Schedule

| ID | WBS | Task | Type | Duration | Start | Finish | Predecessors | Total slack | Free slack | Resources | Work | Cost |
| --- | --- | --- | --- | --- | --- | --- | --- | --- | --- | --- | --- | --- |
| 1 | 1 | **Sistema de gestion de turnos y pacientes para la SAP** |  | 45.25d | 2023-09-14 | 2023-11-17 |  | 0d |  | Ingeniero de Sistemas | 1022h | 9,060,420.5 |
| 2 | 1.1 | **Investigación preliminar** |  | 18.25d | 2023-09-14 | 2023-10-10 |  | 0d |  |  | 166h | 1,498,802 |
| 3 | 1.1.1 | **Verificación de instalaciones** |  | 2.5d | 2023-09-14 | 2023-09-18 |  | 33.25d |  | Electricista | 20h | 12,000 |
| 4 | 1.1.1.1 | Verificar el estado de las instalaciones electricas. |  | 0.5d | 2023-09-14 | 2023-09-14 |  | 36.75d | 0d |  |  |  |
| 5 | 1.1.1.2 | Investigar recursos para el reacondicionamiento electrico del sitio. |  | 2d | 2023-09-14 | 2023-09-18 | 4 | 36.75d | 0d |  |  |  |
| 6 | 1.1.1.3 | Verificación de instalaciones finalizada. | milestone | 0d | 2023-09-18 | 2023-09-18 | 5 | 42.75d |  |  |  |  |
| 7 | 1.1.2 | **Entrevistas** |  | 0.5d | 2023-09-14 | 2023-09-14 |  | 0d |  |  | 4h | 60,692 |
| 8 | 1.1.2.1 | Realizar entrevista al jefe |  | 0.25d | 2023-09-14 | 2023-09-14 |  | 0d |  | Analista en sistemas | 2h | 30,346 |
| 9 | 1.1.2.2 | Realizar entrevista a las recepcionistas |  | 0.25d | 2023-09-14 | 2023-09-14 | 8 | 0d |  | Analista en sistemas | 2h | 30,346 |
| 10 | 1.1.2.3 | Entrevistas finalizadas. | milestone | 0d | 2023-09-14 | 2023-09-14 | 9 | 0d |  |  |  |  |
| 11 | 1.1.3 | Elaborar Especificación de Requisitos de Usuario (ERS) |  | 3d | 2023-09-14 | 2023-09-19 | 10 | 0d |  | Analista en sistemas | 24h | 364,152 |
| 12 | 1.1.4 | Verificar el estado de los equipos actuales (computadoras). |  | 0.5d | 2023-09-19 | 2023-09-19 | 11 | 27.25d | 0d | Tecnico informatico | 4h | 27,972 |
| 13 | 1.1.5 | Realizar pedido de computadoras nuevas a la Subsecretaría de Salud. |  | 0.25d | 2023-09-20 | 2023-09-20 | 12 | 24d | 0d | Tecnico informatico | 2h | 13,986 |
| 14 | 1.1.6 | Recibir pedido de computadoras. |  | 14d | 2023-09-20 | 2023-10-10 | 13 | 24d | 0d | Computadoras | 112h | 1,020,000 |
| 15 | 1.1.7 | Investigación preliminar realizada. | milestone | 0d | 2023-10-10 | 2023-10-10 | 14 | 24d |  |  |  |  |
| 16 | 1.2 | **Desarrollo** |  | 41.75d | 2023-09-19 | 2023-11-17 |  | 0d |  |  | 494h | 6,352,444 |
| 17 | 1.2.1 | **Base de datos** |  | 10d | 2023-09-19 | 2023-10-03 |  | 0.5d |  |  | 80h | 1,240,512 |
| 18 | 1.2.1.1 | Recopilar informacion de las planillas de Excel |  | 1d | 2023-09-19 | 2023-09-20 | 11 | 41.5d | 8.5d | Programador Junior | 8h | 134,720 |
| 19 | 1.2.1.2 | Realizar el modelo entidad relación de la base de datos para turnos y pacientes. |  | 2d | 2023-09-19 | 2023-09-21 | 11 | 0.5d | 0d | Administrador de BD | 16h | 242,768 |
| 20 | 1.2.1.3 | Realizar modelo relacional de la BD. |  | 1d | 2023-09-21 | 2023-09-22 | 19 | 0.5d | 0d | Administrador de BD | 8h | 121,384 |
| 21 | 1.2.1.4 | Desarrollar la base de datos. |  | 5d | 2023-09-22 | 2023-09-29 | 20 | 0.5d | 0d | Administrador de BD | 40h | 606,920 |
| 22 | 1.2.1.5 | Importar datos a la BD |  | 0.5d | 2023-10-02 | 2023-10-03 | 18, 21 | 32d |  | Programador Junior | 4h | 67,360 |
| 23 | 1.2.1.6 | Desplegar la base de datos. |  | 0.5d | 2023-10-03 | 2023-10-03 | 21 | 0.25d | 0d | Programador Junior | 4h | 67,360 |
| 24 | 1.2.1.7 | Base de datos desplegada. | milestone | 0d | 2023-10-03 | 2023-10-03 | 23 | 31.75d |  |  |  |  |

| ID | WBS | Task | Type | Duration | Start | Finish | Predecessors | Total slack | Resources | Work | Cost |
| --- | --- | --- | --- | --- | --- | --- | --- | --- | --- | --- | --- |
| 25 | 1.2.2 | **Interfaz de usuario** |  | 10.25d | 2023-09-19 | 2023-10-03 |  | 0d |  | 82h | 1,350,924 |
| 26 | 1.2.2.1 | Diseñar boceto de interfaz del programa que será usado por el personal de recepción. |  | 3d | 2023-09-19 | 2023-09-22 | 11 | 0d | Diseñador de Interfaces | 24h | 273,072 |
| 27 | 1.2.2.2 | Presentar boceto al personal de recepción. |  | 0.25d | 2023-09-22 | 2023-09-22 | 26 | 0d | Diseñador de Interfaces | 2h | 22,756 |
| 28 | 1.2.2.3 | Desarrollar interfaz. |  | 7d | 2023-09-22 | 2023-10-03 | 27 | 0d | Programador Senior | 56h | 1,055,096 |
| 29 | 1.2.2.4 | Interfaz de usuario realizada. | milestone | 0d | 2023-10-03 | 2023-10-03 | 28 | 0d |  |  |  |
| 30 | 1.2.3 | **Aplicación** |  | 15d | 2023-10-03 | 2023-10-25 |  | 0d |  | 120h | 2,260,920 |
| 31 | 1.2.3.1 | Realizar diagrama de clases. |  | 1d | 2023-10-03 | 2023-10-04 | 23, 29 | 0d | Programador Senior | 8h | 150,728 |
| 32 | 1.2.3.2 | Desarrollar el módulo de turnos de la aplicación. |  | 14d | 2023-10-04 | 2023-10-25 | 31 | 0d | Programador Senior [50%] | 56h | 1,055,096 |
| 33 | 1.2.3.3 | Desarrollar el módulo de pacientes de la aplicación. |  | 14d | 2023-10-04 | 2023-10-25 | 31 | 0d | Programador Senior [50%] | 56h | 1,055,096 |
| 34 | 1.2.3.4 | Aplicación desarrollada. | milestone | 0d | 2023-10-25 | 2023-10-25 | 33, 32 | 0d |  |  |  |
| 35 | 1.2.4 | **Integración** |  | 7d | 2023-10-25 | 2023-11-03 |  | 0d |  | 80h | 1,258,976 |
| 36 | 1.2.4.1 | Integrar capas del sistema. |  | 2d | 2023-10-25 | 2023-10-27 | 34 | 0d | Programador Senior | 16h | 301,456 |
| 37 | 1.2.4.2 | Realizar pruebas al sistema. |  | 5d | 2023-10-27 | 2023-11-03 | 36 | 0d | Ingeniero de pruebas | 40h | 553,360 |
| 38 | 1.2.4.3 | Realizar manual de usuario de la aplicación. |  | 3d | 2023-10-27 | 2023-11-01 | 36 | 2d | Programador Junior | 24h | 404,160 |
| 39 | 1.2.4.4 | Integración finalizada. | milestone | 0d | 2023-11-03 | 2023-11-03 | 38, 37 | 0d |  |  |  |
| 40 | 1.2.5 | **Despliegue** |  | 9.5d | 2023-11-03 | 2023-11-17 |  | 0d |  | 132h | 241,112 |
| 41 | 1.2.5.1 | **Reacondicionamiento** |  | 6.5d | 2023-11-03 | 2023-11-14 |  | 0d | Electricista | 108h | 68,400 |
| 42 | 1.2.5.1.1 | Realizar presupuesto de recursos para el reacondicionamiento eléctrico del sitio (cableado y limpieza). |  | 0.5d | 2023-11-03 | 2023-11-06 | 39, 5 | 0d |  |  |  |
| 43 | 1.2.5.1.2 | Reacondicionar el lugar. |  | 5d | 2023-11-06 | 2023-11-13 | 42 | 0d | Materiales electricos | 40h | 40,000 |
| 44 | 1.2.5.1.3 | Realizar limpieza del lugar |  | 1d | 2023-11-13 | 2023-11-14 | 43 | 0d | Materiales de limpieza; Servicio de limpieza | 16h | 16,400 |
| 45 | 1.2.5.1.4 | Reacondicionamiento finalizado | milestone | 0d | 2023-11-14 | 2023-11-14 | 44 | 0d |  |  |  |
| 46 | 1.2.5.2 | **Instalación** |  | 3d | 2023-11-14 | 2023-11-17 |  | 0d |  | 24h | 172,712 |
| 47 | 1.2.5.2.1 | Instalar las nuevas computadoras en el área de recepción. |  | 0.75d | 2023-11-14 | 2023-11-14 | 15, 45 | 0d | Tecnico informatico | 6h | 41,958 |
| 48 | 1.2.5.2.2 | Instalar el sistema en las computadoras nuevas. |  | 0.25d | 2023-11-15 | 2023-11-15 | 47 | 0d | Tecnico informatico | 2h | 13,986 |
| 49 | 1.2.5.2.3 | Capacitar al personal de recepción. |  | 2d | 2023-11-15 | 2023-11-17 | 48 | 0d | Capacitador | 16h | 116,768 |
| 50 | 1.2.5.2.4 | Instalación finalizada. | milestone | 0d | 2023-11-17 | 2023-11-17 | 49 | 0d |  |  |  |
| 51 | 1.2.5.3 | Sistema desplegado. | milestone | 0d | 2023-11-17 | 2023-11-17 | 50 | 0d |  |  |  |
| 52 | 1.2.6 | Desarrollo finalizado. | milestone | 0d | 2023-11-17 | 2023-11-17 | 51 | 0d |  |  |  |
| 53 | 2 | Sistema de gestión implementado. | milestone | 0d | 2023-11-17 | 2023-11-17 | 52 | 0d |  |  |  |
